Schedule from MS Project, 2017-07-03 to 2017-11-03, costs in ¥, A marks actual dates.

## Calendars

- 标准: Mon-Fri 08:00-12:00, 13:00-17:00; Sat-Sun off.

## Resources

| Resource | Rate |
| --- | --- |
| 壮工 | 25 |
| 技工 | 37.5 |

## Schedule

| ID | WBS | Task | Type | Duration | Start | Finish | Predecessors | Complete | Remaining | Total slack | Free slack | Constraint | Resources | Work | Actual work | Cost | Actual cost |
| --- | --- | --- | --- | --- | --- | --- | --- | --- | --- | --- | --- | --- | --- | --- | --- | --- | --- |
| 1 | 1 | **道路及配套工程** |  | 89.5d | 2017-07-03 A | 2017-11-03 |  | 77% | 20.77d | 0d |  |  |  | 23880h | 15952h | 1,134,000 | 589,150 |
| 2 | 1.1 | **准备工作** |  | 65d | 2017-07-03 A | 2017-09-30 A |  | 100% |  |  |  |  |  | 11392h | 11392h | 343,300 | 343,300 |
| 3 | 1.1.1 | 预算报批 |  | 21d | 2017-07-03 A | 2017-07-31 A |  | 100% |  |  |  | start no earlier than 2017-07-03 |  |  |  | 5,000 | 5,000 |
| 4 | 1.1.2 | 对外公告 |  | 22d | 2017-08-02 A | 2017-08-31 A | 3 | 100% |  |  |  |  |  |  |  | 1,500 | 1,500 |
| 5 | 1.1.3 | 开走路上停留的车辆 |  | 23d | 2017-08-01 A | 2017-08-31 A | 4 | 100% |  |  |  |  | 壮工 [4000%] | 7360h | 7360h | 186,000 | 186,000 |
| 6 | 1.1.4 | 开挖槽沟 |  | 21d | 2017-09-01 A | 2017-09-30 A | 5 | 100% |  |  |  |  | 壮工 [2400%] | 4032h | 4032h | 150,800 | 150,800 |
| 7 | 1.2 | **供水工程** |  | 29.5d | 2017-09-01 A | 2017-10-12 |  | 39% | 17.91d | 2d |  |  |  | 1176h | 528h | 100,600 | 46,750 |
| 8 | 1.2.1 | 维修水管 |  | 11d | 2017-09-01 A | 2017-10-09 | 6 | 50% | 5.5d | 2d | 0d |  | 技工 [1200%] | 1056h | 528h | 89,600 | 44,800 |
| 9 | 1.2.2 | 压力试验 |  | 3d | 2017-10-09 | 2017-10-12 | 8 |  |  | 2d | 0d |  | 技工 [500%] | 120h |  | 6,000 |  |
| 10 | 1.3 | **电力工程** |  | 45.5d | 2017-09-01 A | 2017-11-03 |  | 63% | 16.76d | 0d |  |  |  | 6944h | 3024h | 404,400 | 157,400 |
| 11 | 1.3.1 | 支设新电杆 |  | 21d | 2017-09-01 A | 2017-09-30 A | 5 | 100% |  |  |  |  | 壮工 [1000%] | 1680h | 1680h | 57,000 | 57,000 |
| 12 | 1.3.2 | 铺设电缆 |  | 21d | 2017-09-01 A | 2017-09-30 A | 6 | 100% |  |  |  |  | 技工 [800%] | 1344h | 1344h | 100,400 | 100,400 |
| 13 | 1.3.3 | 吊装变压器 |  | 7.5d | 2017-10-02 | 2017-10-11 | 11, 12, 16 |  |  | 0d |  |  | 技工 [2000%] | 1200h |  | 120,000 |  |
| 14 | 1.3.4 | 电力入户 |  | 17d | 2017-10-11 | 2017-11-03 | 13 |  |  | 0d |  |  | 技工 [2000%] | 2720h |  | 127,000 |  |
| 15 | 1.4 | **道路工程** |  | 43.5d | 2017-09-01 A | 2017-11-01 |  | 60% | 17.4d | 2d |  |  |  | 4368h | 1008h | 285,700 | 41,700 |
| 16 | 1.4.1 | 剪除树枝 |  | 21d | 2017-09-01 A | 2017-09-30 A | 5 | 100% |  |  |  |  | 壮工 [600%] | 1008h | 1008h | 26,700 | 26,700 |
| 17 | 1.4.2 | 复铺路面 |  | 14d | 2017-10-12 | 2017-11-01 | 9, 12 |  |  | 2d |  |  | 壮工 [3000%] | 3360h |  | 234,000 |  |
| 18 | 1.5 | 恢复交通 | milestone | 0d | 2017-11-03 | 2017-11-03 | 14, 17 |  |  | 0d |  |  |  |  |  |  |  |

Notes:
- 5: 增加2个到5个,缩短工期 / 第一次监控，最短工期优化增加到40人，缩短工期
- 6: 增加14个到14个，缩短工期
- 13: 增加技工5人到20人缩短工期
